# Projeto Clínica Médica

Schedule from MS Project, 2019-05-20 to 2019-06-19, costs in R$, A marks actual dates.

## Calendars

- Padrão: Mon-Fri 09:00-12:00, 13:00-18:00; Sat-Sun off.

## Resources

| Resource | Rate |
| --- | --- |
| Cliente |  |
| Analista Israel | 150 |
| Analista Jonatas | 100 |
| GP Externo | 200 |
| Analista03 |  |
| Analista Fabricio |  |
| Analista Julyano |  |
| Analista 05 |  |
| Desenvolvedor 01 |  |
| Desenvolvedor 02 |  |

## Schedule

| ID | WBS | Task | Type | Duration | Start | Finish | Predecessors | Complete | Remaining | Baseline start | Baseline finish | Baseline duration | Total slack | Constraint | Resources | Work | Actual work | Cost | Baseline cost | Actual cost |
| --- | --- | --- | --- | --- | --- | --- | --- | --- | --- | --- | --- | --- | --- | --- | --- | --- | --- | --- | --- | --- |
| 1 | 1 | **Projeto Escola** |  | 23d | 2019-05-20 A | 2019-06-19 |  | 72% | 6.4d | 2019-05-20 | 2019-06-19 | 23d | 0d |  |  | 129.25h | 93.25h | 7,532.06 | 8,493.93 | 7,532.06 |
| 2 | 1.1 | **Prospecção** |  | 8d | 2019-05-20 A | 2019-05-29 A |  | 100% |  | 2019-05-20 | 2019-05-29 | 8d |  |  |  | 25.25h | 25.25h | 3,632.06 | 4,593.93 | 3,632.06 |
| 3 | 1.1.1 | **PTEC** |  | 5.91d | 2019-05-20 A | 2019-05-27 A |  | 100% |  | 2019-05-20 | 2019-05-27 | 6d |  |  |  | 16.3h | 16.3h | 2,350 | 3,250 | 2,350 |
| 4 | 1.1.1.1 | Estudar Domínio de Aplicação | manual | 0.5d | 2019-05-20 A | 2019-05-20 A |  | 100% |  | 2019-05-20 | 2019-05-20 | 1d |  |  | Analista Israel | 3h | 3h | 450 | 900 | 450 |
| 5 | 1.1.1.2 | Reunir-se com o Fornecedor de Requisitos | manual | 1d | 2019-05-21 A | 2019-05-21 A | 4 | 100% |  | 2019-05-21 | 2019-05-21 | 1d |  |  | Analista Israel | 2h | 2h | 300 | 300 | 300 |
| 6 | 1.1.1.3 | Redigir PTEC | manual | 1.5d | 2019-05-21 A | 2019-05-23 A | 5 | 100% |  | 2019-05-21 | 2019-05-23 | 2d |  |  | Analista Israel | 10h | 10h | 1,500 | 1,950 | 1,500 |
| 7 | 1.1.1.4 | Revisar Proposta Técnica | manual | 1d | 2019-05-24 A | 2019-05-24 A | 6 | 100% |  | 2019-05-24 | 2019-05-24 | 1d |  |  | Analista Jonatas | 1h | 1h | 100 | 100 | 100 |
| 8 | 1.1.1.5 | Aprovar PTEC | manual | 0.04d | 2019-05-27 A | 2019-05-27 A | 7 | 100% |  | 2019-05-27 | 2019-05-27 | 0.12d |  | finish no earlier than 2019-05-27 | Cliente | 0.3h | 0.3h |  |  |  |
| 9 | 1.1.2 | **Estimativa Preliminar de Tamanho** |  | 0.16d | 2019-05-27 A | 2019-05-27 A |  | 100% |  | 2019-05-27 | 2019-05-27 | 0.25d |  |  |  | 1.3h | 1.3h | 185 | 246.88 | 185 |
| 10 | 1.1.2.1 | Estimar Tamanho de Projeto | manual | 0.16d | 2019-05-27 A | 2019-05-27 A | 7 | 100% |  | 2019-05-27 | 2019-05-27 | 0.12d |  |  | Analista Israel; Analista Jonatas | 1h | 1h | 125 | 46.88 | 125 |
| 11 | 1.1.2.2 | Revisar Estimativa de Tamanho de Projeto | manual | 0.04d | 2019-05-27 A | 2019-05-27 A | 10 | 100% |  | 2019-05-27 | 2019-05-27 | 0.12d |  |  | GP Externo | 0.3h | 0.3h | 60 | 200 | 60 |
| 12 | 1.1.3 | **Estimativa Preliminar de Cronograma e Orçamento** |  | 2.75d | 2019-05-27 A | 2019-05-29 A |  | 100% |  | 2019-05-27 | 2019-05-29 | 2.75d |  |  |  | 7.65h | 7.65h | 1,097.06 | 1,097.06 | 1,097.06 |
| 13 | 1.1.3.1 | Elaborar Cronograma e Orçamento Preliminares | manual | 1.88d | 2019-05-27 A | 2019-05-29 A | 9 | 100% |  | 2019-05-27 | 2019-05-29 | 1.88d |  |  | Analista Israel | 6.65h | 6.65h | 997.06 | 997.06 | 997.06 |
| 14 | 1.1.3.2 | Revisar Cronograma e Orçamento Preliminares | manual | 0.88d | 2019-05-29 A | 2019-05-29 A | 13 | 100% |  | 2019-05-29 | 2019-05-29 | 0.88d |  |  | Analista Jonatas | 1h | 1h | 100 | 100 | 100 |
| 15 | 1.2 | **Análise** |  | 4.75d | 2019-05-29 A | 2019-06-05 A |  | 100% |  | 2019-05-29 | 2019-06-05 | 4.75d |  |  |  | 35h | 35h | 3,900 | 3,900 | 3,900 |
| 16 | 1.2.1 | **Documento de Requisitos (DRE)** |  | 3d | 2019-05-29 A | 2019-06-03 A |  | 100% |  | 2019-05-29 | 2019-06-03 | 3d |  |  |  | 27h | 27h | 2,750 | 2,750 | 2,750 |
| 17 | 1.2.1.1 | Reunir-se com o Cliente | manual | 0.5d | 2019-05-29 A | 2019-05-30 A | 14 | 100% |  | 2019-05-29 | 2019-05-30 | 0.5d |  |  | Analista Jonatas; Analista Israel | 3h | 3h | 400 | 400 | 400 |
| 18 | 1.2.1.2 | Elaborar DRE | manual | 2.5d | 2019-05-30 A | 2019-06-02 A | 17 | 100% |  | 2019-05-30 | 2019-06-02 | 2.5d |  |  | Analista Israel | 15h | 15h | 2,250 | 2,250 | 2,250 |
| 19 | 1.2.1.3 | Revisar DRE | manual | 0.38d | 2019-06-02 A | 2019-06-02 A | 18 | 100% |  | 2019-06-02 | 2019-06-02 | 0.38d |  |  | Analista Jonatas | 1h | 1h | 100 | 100 | 100 |
| 20 | 1.2.1.4 | Submeter DRE para aprovação do Cliente | manual | 1d | 2019-06-03 A | 2019-06-03 A | 19 | 100% |  | 2019-06-03 | 2019-06-03 | 1d |  |  | Cliente | 8h | 8h |  |  |  |
| 21 | 1.2.2 | **Matriz de Rastreabilidade Bidirecional (MRB)** |  | 1.75d | 2019-06-04 A | 2019-06-05 A |  | 100% |  | 2019-06-04 | 2019-06-05 | 1.75d |  |  |  | 8h | 8h | 1,150 | 1,150 | 1,150 |
| 22 | 1.2.2.1 | Elaborar MRB | manual | 0.88d | 2019-06-04 A | 2019-06-04 A | 20 | 100% |  | 2019-06-04 | 2019-06-04 | 0.88d |  |  | Analista Israel | 7h | 7h | 1,050 | 1,050 | 1,050 |
| 23 | 1.2.2.2 | Revisar MRB | manual | 1d | 2019-06-04 A | 2019-06-05 A | 22 | 100% |  | 2019-06-04 | 2019-06-05 | 1d |  |  | Analista Jonatas | 1h | 1h | 100 | 100 | 100 |
| 24 | 1.3 | **Projeto** |  | 3.25d | 2019-06-05 A | 2019-06-10 A |  | 100% |  | 2019-06-05 | 2019-06-10 | 3.25d |  |  |  | 15h | 15h |  |  |  |
| 25 | 1.3.1 | **Diagrama de Classes** |  | 2.25d | 2019-06-05 A | 2019-06-07 A |  | 100% |  | 2019-06-05 | 2019-06-07 | 2.25d |  |  |  | 8h | 8h |  |  |  |
| 26 | 1.3.1.1 | Elaborar Diagrama de Classe | manual | 0.27d | 2019-06-05 A | 2019-06-06 A | 23 | 100% |  | 2019-06-05 | 2019-06-06 | 1d |  |  | Analista Fabricio | 5h | 5h |  |  |  |
| 27 | 1.3.1.2 | Revisar Diagrama de Classe | manual | 1d | 2019-06-06 A | 2019-06-07 A | 26 | 100% |  | 2019-06-06 | 2019-06-07 | 1d |  |  | Analista Julyano | 1h | 1h |  |  |  |
| 28 | 1.3.1.3 | Atualizar MRB | manual | 0.25d | 2019-06-07 A | 2019-06-07 A | 27 | 100% |  | 2019-06-07 | 2019-06-07 | 0.25d |  |  | Analista Julyano | 2h | 2h |  |  |  |

| ID | WBS | Task | Type | Duration | Start | Finish | Predecessors | Complete | Remaining | Baseline start | Baseline finish | Baseline duration | Total slack | Constraint | Resources | Work | Actual work |
| --- | --- | --- | --- | --- | --- | --- | --- | --- | --- | --- | --- | --- | --- | --- | --- | --- | --- |
| 29 | 1.3.2 | **Modelo Entidade Relacionamento (MER)** |  | 1d | 2019-06-07 A | 2019-06-10 A |  | 100% |  | 2019-06-07 | 2019-06-10 | 1d |  |  |  | 7h | 7h |
| 30 | 1.3.2.1 | Elaborar MER | manual | 1d | 2019-06-07 A | 2019-06-08 A | 28 | 100% |  | 2019-06-07 | 2019-06-08 | 1d |  |  | Analista Fabricio | 6h | 6h |
| 31 | 1.3.2.2 | Revisar MER | manual | 1d | 2019-06-10 A | 2019-06-10 A | 30 | 100% |  | 2019-06-10 | 2019-06-10 | 1d |  |  | Analista Julyano | 1h | 1h |
| 32 | 1.4 | **Implementação** |  | 7d | 2019-06-11 A | 2019-06-19 |  | 33% | 4.67d | 2019-06-11 | 2019-06-19 | 7d | 0d |  |  | 54h | 18h |
| 33 | 1.4.1 | **Release 01** |  | 4d | 2019-06-11 A | 2019-06-14 A |  | 100% |  | 2019-06-11 | 2019-06-17 | 5d |  |  |  | 18h | 18h |
| 34 | 1.4.1.1 | **Implementação** |  | 2d | 2019-06-11 A | 2019-06-12 A |  | 100% |  | 2019-06-11 | 2019-06-12 | 2d |  |  |  | 16h | 16h |
| 35 | 1.4.1.1.1 | Implementar RFC02 | manual | 1d | 2019-06-11 A | 2019-06-11 A | 31 | 100% |  | 2019-06-11 | 2019-06-11 | 1d |  |  | Desenvolvedor 01 | 8h | 8h |
| 36 | 1.4.1.1.2 | Implementar RFC11 | manual | 1d | 2019-06-12 A | 2019-06-12 A | 31 | 100% |  | 2019-06-12 | 2019-06-12 | 1d |  |  | Desenvolvedor 02 | 8h | 8h |
| 37 | 1.4.1.2 | **Teste** |  | 2d | 2019-06-13 A | 2019-06-14 A |  | 100% |  | 2019-06-13 | 2019-06-17 | 3d |  |  |  | 2h | 2h |
| 38 | 1.4.1.2.1 | Testar RFC02 | manual | 1d | 2019-06-14 A | 2019-06-14 A | 35 | 100% |  | 2019-06-14 | 2019-06-14 | 1d |  |  | Desenvolvedor 02 | 1h | 1h |
| 39 | 1.4.1.2.2 | Testar RFC11 | manual | 1d | 2019-06-13 A | 2019-06-13 A | 36 | 100% |  | 2019-06-13 | 2019-06-17 | 2d |  |  | Desenvolvedor 01 | 1h | 1h |
| 40 | 1.4.2 | **Release 02** |  | 3d | 2019-06-12 | 2019-06-14 |  |  |  | 2019-06-12 | 2019-06-14 | 3d | 0d |  |  | 18h |  |
| 41 | 1.4.2.1 | **Implementação** |  | 2d | 2019-06-12 | 2019-06-13 |  |  |  | 2019-06-12 | 2019-06-13 | 2d | 0d |  |  | 16h |  |
| 42 | 1.4.2.1.1 | Implementar RFC03 | manual | 1d | 2019-06-12 | 2019-06-12 | 35 |  |  | 2019-06-12 | 2019-06-12 | 1d |  |  | Desenvolvedor 01 | 8h |  |
| 43 | 1.4.2.1.2 | Implementar RFC04 | manual | 1d | 2019-06-13 | 2019-06-13 | 36 |  |  | 2019-06-13 | 2019-06-13 | 1d |  |  | Desenvolvedor 02 | 8h |  |
| 44 | 1.4.2.2 | **Teste** |  | 1d | 2019-06-14 | 2019-06-14 |  |  |  | 2019-06-14 | 2019-06-14 | 1d | 0d |  |  | 2h |  |
| 45 | 1.4.2.2.1 | Testar RFC03 | manual | 1d | 2019-06-14 | 2019-06-14 |  |  |  | 2019-06-14 | 2019-06-14 | 1d |  |  | Desenvolvedor 02 | 1h |  |
| 46 | 1.4.2.2.2 | Testar RFC04 | manual | 1d | 2019-06-14 | 2019-06-14 |  |  |  | 2019-06-14 | 2019-06-14 | 1d |  |  | Desenvolvedor 01 | 1h |  |
| 47 | 1.4.3 | **Release 03** |  | 2d | 2019-06-18 | 2019-06-19 |  |  |  | 2019-06-18 | 2019-06-19 | 2d | 0d |  |  | 18h |  |
| 48 | 1.4.3.1 | **Implementação** |  | 1d | 2019-06-18 | 2019-06-18 |  |  |  | 2019-06-18 | 2019-06-18 | 1d | 0d |  |  | 16h |  |
| 49 | 1.4.3.1.1 | Implementar RFC05 | manual | 1d | 2019-06-18 | 2019-06-18 |  |  |  | 2019-06-18 | 2019-06-18 | 1d |  |  | Desenvolvedor 01 | 8h |  |
| 50 | 1.4.3.1.2 | Implementar RFC06 | manual | 1d | 2019-06-18 | 2019-06-18 |  |  |  | 2019-06-18 | 2019-06-18 | 1d |  |  | Desenvolvedor 02 | 8h |  |
| 51 | 1.4.3.2 | **Teste** |  | 1d | 2019-06-19 | 2019-06-19 |  |  |  | 2019-06-19 | 2019-06-19 | 1d | 0d |  |  | 2h |  |
| 52 | 1.4.3.2.1 | Testar RFC05 |  | 1d | 2019-06-19 | 2019-06-19 |  |  |  | 2019-06-19 | 2019-06-19 | 1d | 0d | start no earlier than 2019-06-19 | Desenvolvedor 02 | 1h |  |
| 53 | 1.4.3.2.2 | Testar RFC06 | manual | 1d | 2019-06-19 | 2019-06-19 |  |  |  | 2019-06-19 | 2019-06-19 | 1d |  |  | Desenvolvedor 01 | 1h |  |
